Schedule from OmniPlan, 2013-08-02 to 2013-10-08.
Project start 2013-08-02

## Resources

| Resource | Group |
| --- | --- |
| Resource 1 | staff |
| Equipment 1 | equipment |
| Material 1 | material |
| Group 1 | group |
| 萍钢 | staff |
| 志泽 | staff |
| 动画 | staff |
| 小一 | staff |
| 夏贝 | staff |
| 红明 | staff |
| 策划 | staff |

## Schedule

| ID | WBS | Task | Start | Predecessors | Complete | Resources | Work | Actual work |
| --- | --- | --- | --- | --- | --- | --- | --- | --- |
| 1 | 1 | **技术调研Demo制作** |  |  |  |  |  |  |
| 2 | 1.1 | 选定框架 | 2013-08-05 |  | 100% | 萍钢 | 8h | 8h |
| 3 | 1.2 | 物理引擎Demo | 2013-08-06 | 2 | 20% | 萍钢 | 40h | 8h |
| 4 | 1.3 | DragonBones和Box2D的Demo | 2013-08-13 | 3 |  | 萍钢 | 24h |  |
| 5 | 1.4 | 粒子引擎Demo | 2013-08-16 | 4 |  | 萍钢 | 8h |  |
| 6 | 2 | **引子** |  |  |  |  |  |  |
| 7 | 2.1 | 故事策划 | 2013-08-08 |  |  | 策划 | 16h |  |
| 8 | 2.2 | 图画 | 2013-08-12 | 7 |  | 红明 | 24h |  |
| 9 | 2.3 | 开发 | 2013-08-19 | 5 |  | 萍钢 | 4h |  |
| 10 | 3 | **首页** |  |  |  |  |  |  |
| 11 | 3.1 | 策划 | 2013-08-12 | 7 |  | 策划 | 4h |  |
| 12 | 3.2 | 美术 | 2013-08-15 | 8 |  | 红明 | 24h |  |
| 13 | 3.3 | 开发 | 2013-08-20 | 9 |  | 萍钢 | 4h |  |
| 14 | 4 | **登陆注册** |  |  |  |  |  |  |
| 15 | 4.1 | 产品原型 | 2013-08-08 |  |  | 志泽 | 4h |  |
| 16 | 4.2 | UI风格 | 2013-08-19 | 23 |  | 红明 | 8h |  |
| 17 | 4.3 | UI设计 | 2013-08-21 | 16 |  | 夏贝 | 1h |  |
| 18 | 4.4 | 前端开发 | 2013-08-21 | 13 |  | 萍钢 | 3h |  |
| 19 | 4.5 | 后台 | 2013-08-02 |  |  | 小一 | 4h |  |
| 20 | 4.6 | 封号默认提供值 | 2013-08-13 | 11 |  | 策划 | 4h |  |
| 21 | 5 | **个人中心** |  |  |  |  |  |  |
| 22 | 5.1 | 个人中心相关策划 | 2013-08-14 | 20 |  | 策划 | 40h |  |
| 23 | 5.2 | 产品原型 | 2013-08-09 | 15 |  | 志泽 | 16h |  |
| 24 | 5.3 | UI设计 | 2013-08-22 | 17 |  | 夏贝 | 16h |  |
| 25 | 5.4 | 个人信息、成就、收集、游戏入口研发 | 2013-08-22 | 18 |  | 萍钢 | 16h |  |
| 26 | 5.5 | 成就、收集接口 | 2013-08-08 | 19 |  | 小一 | 8h |  |
| 27 | 5.6 | 速成手册 | 2013-08-26 | 25 |  | 萍钢 | 24h |  |

Notes:
- 6: 4-5 / 页图，小狮子动画 / 1 / 个
- 14: 引子之后出现，不联网不让玩，注册登陆过后就可以不联网玩了 / 封号：默认提供、也可更改 / 用户名 / 密码
- 20: 默认提供、也可更改
- 21: 个人信息展示：显示封号、用户、注销账号、积分、属性 / 成就 / 收集 / 游戏入口 / 工具：帮助文档、地图 / 制作团队
- 22: 成就体系、收集体系、速成手册、制作团队

| ID | WBS | Task | Start | Predecessors | Complete | Resources | Work | Actual work |
| --- | --- | --- | --- | --- | --- | --- | --- | --- |
| 28 | 5.7 | **地图** |  |  |  |  |  |  |
| 29 | 5.7.1 | 美术 | 2013-08-26 | 24 |  | 夏贝 | 8h |  |
| 30 | 5.7.2 | 策划交互点 | 2013-08-21 | 22 |  | 策划 | 4h |  |
| 31 | 5.7.3 | 开发 | 2013-08-29 | 27 |  | 萍钢 | 16h |  |
| 32 | 5.8 | 制作团队 |  |  |  |  | 8h |  |
| 33 | 6 | **社交分享** |  |  |  |  |  |  |
| 34 | 6.1 | 策划分享点和文案 | 2013-08-29 | 38 |  | 策划 | 24h |  |
| 35 | 6.2 | 研发 | 2013-08-09 | 26 |  | 小一 | 8h |  |
| 36 | 6.3 | UI皮肤 | 2013-08-27 | 29 |  | 夏贝 | 4h |  |
| 37 | 7 | **小狮子动画** |  |  |  |  |  |  |
| 38 | 7.1 | 多个动作策划，最好跟模块走 | 2013-08-22 | 30 |  | 策划 | 40h |  |
| 39 | 8 | **模块1** |  |  |  |  |  |  |
| 40 | 8.1 | 策划 | 2013-09-02 | 38 |  | 策划 | 8h |  |
| 41 | 8.2 | 模块UI | 2013-08-28 | 36 |  | 夏贝 | 16h |  |
| 42 | 8.3 | **场景一** |  |  |  |  |  |  |
| 43 | 8.3.1 | 美术1 | 2013-08-21 | 16 |  | 红明 | 8h |  |
| 44 | 8.3.2 | 开发 | 2013-09-02 | 31 |  | 萍钢 | 8h |  |
| 45 | 8.4 | **场景二** |  |  |  |  |  |  |
| 46 | 8.4.1 | 美术1，服装 | 2013-08-30 | 41 | 80% | 夏贝 | 16h | 12.8h |
| 47 | 8.4.2 | 美术2 | 2013-08-22 | 43 |  | 红明 | 8h |  |
| 48 | 8.4.3 | 开发 | 2013-09-03 | 44 |  | 萍钢 | 16h |  |
| 49 | 8.4.4 | 小动画 | 2013-08-26 | 24 |  | 志泽 | 8h |  |
| 50 | 8.5 | **场景三** |  |  |  |  |  |  |
| 51 | 8.5.1 | 美术 | 2013-08-23 | 47 |  | 红明 | 4h |  |
| 52 | 8.5.2 | 开发 | 2013-09-05 | 48 |  | 萍钢 | 8h |  |

Notes:
- 28: 拖拽、数据交互
- 39: 晨起

| ID | WBS | Task | Start | Predecessors | Resources | Work |
| --- | --- | --- | --- | --- | --- | --- |
| 53 | 9 | **模块2** |  |  |  |  |
| 54 | 9.1 | **场景1** |  |  |  |  |
| 55 | 9.1.1 | 策划 | 2013-09-04 | 40 | 策划 | 8h |
| 56 | 9.1.2 | 美术 | 2013-08-26 | 51 | 红明 | 16h |
| 57 | 9.1.3 | 开发 | 2013-09-06 | 52 | 萍钢 | 8h |
| 58 | 9.2 | **场景2** |  |  |  |  |
| 59 | 9.2.1 | 策划 | 2013-09-05 | 55 | 策划 | 8h |
| 60 | 9.2.2 | 美术 | 2013-08-28 | 56 | 红明 | 16h |
| 61 | 9.2.3 | 开发 | 2013-09-09 | 57 | 萍钢 | 40h |
| 62 | 10 | **模块3** |  |  |  |  |
| 63 | 10.1 | 策划 | 2013-09-05 | 55 | 策划 | 24h |
| 64 | 10.2 | 主场景原画 | 2013-08-30 | 60 | 红明 | 24h |
| 65 | 10.3 | 游戏元素原画 | 2013-09-03 | 46 | 夏贝 | 40h |
| 66 | 10.4 | 开发 | 2013-09-16 | 61 | 萍钢 | 40h |
| 67 | 11 | **模块4** |  |  |  |  |
| 68 | 11.1 | **场景1** |  |  |  |  |
| 69 | 11.1.1 | 美术 | 2013-09-04 | 64 | 红明 | 16h |
| 70 | 11.1.2 | 策划 | 2013-09-11 | 63 | 策划 | 12h |
| 71 | 11.1.3 | 开发 | 2013-09-23 | 66 | 萍钢 | 8h |
| 72 | 11.2 | **场景2** |  |  |  |  |
| 73 | 11.2.1 | 美术 | 2013-09-06 | 69 | 红明 | 16h |
| 74 | 11.2.2 | 策划 | 2013-09-13 | 70 | 策划 | 12h |
| 75 | 11.2.3 | 开发 | 2013-09-24 | 71 | 萍钢 | 40h |
| 76 | 12 | **模块5** |  |  |  |  |
| 77 | 12.1 | **场景1** |  |  |  |  |
| 78 | 12.1.1 | 策划 | 2013-09-17 | 74 | 策划 | 12h |
| 79 | 12.1.2 | 美术 | 2013-09-10 | 73 | 红明 | 16h |
| 80 | 12.1.3 | 开发 | 2013-10-01 | 75 | 萍钢 | 8h |

Notes:
- 53: 锻炼
- 54: 练武场、兵器架
- 58: 骑射
- 62: 传膳、做菜、试菜
- 67: 早读
- 72: 选书：圣训、要读的书
- 76: 上朝
- 77: 上朝情景

| ID | WBS | Task | Start | Predecessors | Resources | Work |
| --- | --- | --- | --- | --- | --- | --- |
| 81 | 12.2 | **场景2** |  |  |  |  |
| 82 | 12.2.1 | 策划 | 2013-09-19 | 78 | 策划 | 1.5h |
| 83 | 12.2.2 | 美术 | 2013-09-12 | 79 | 红明 | 16h |
| 84 | 12.2.3 | 开发，可写的，可选的 | 2013-10-02 | 80 | 萍钢 | 24h |
| 85 | 13 | **模块6** |  |  |  |  |
| 86 | 13.1 | **场景1** |  |  |  |  |
| 87 | 13.1.1 | 策划 | 2013-09-20 | 82 | 策划 | 12h |
| 88 | 13.1.2 | 美术 | 2013-09-16 | 83 | 红明 | 16h |
| 89 | 13.1.3 | 开发 | 2013-10-07 | 84 | 萍钢 | 8h |
| 90 | 13.2 | **场景2** |  |  |  |  |
| 91 | 13.2.1 | 策划 | 2013-09-24 | 87 | 策划 | 12h |
| 92 | 13.2.2 | 美术 | 2013-09-18 | 88 | 红明 | 16h |
| 93 | 13.2.3 | 开发 | 2013-10-08 | 89 | 萍钢 | 40h |
| 94 | 13.2.4 | 动画 |  |  |  | 24h |

Notes:
- 81: 批奏折
- 85: 娱乐
- 86: 外景
- 90: 戏台
